# airbnb_henrique_joao

How a schedule from MS Project changed from version to version. A marks actual dates.

## Version 1 (saved 2018-11-25)

Note of the change: Update aguadoce_estevao_msproject.mpp

| ID | Task | Duration | Start | Finish |
| --- | --- | --- | --- | --- |
| 1 | Desenvolvimento da aplicação Airbnb | 208d | 2018-11-26 | 2019-09-27 |
| 2 | Definição do projeto a desenvolver | 0.38d | 2018-11-26 | 2018-11-26 |
| 3 | Reunião com cliente | 3h | 2018-11-26 | 2018-11-26 |
| 4 | Análise e compra de recursos | 6d | 2018-11-26 | 2018-12-04 |
| 5 | Identificação de ferramentas e recursos | 2d | 2018-11-26 | 2018-11-28 |
| 6 | Escolha e compra de hardware | 2d | 2018-11-28 | 2018-11-30 |
| 7 | Escolha e compra de software | 2d | 2018-11-28 | 2018-11-30 |
| 8 | Arrendamento de escritório | 3d | 2018-11-28 | 2018-12-03 |
| 9 | Análise de custos | 1d | 2018-12-03 | 2018-12-04 |
| 10 | Análise do sistema | 24d | 2018-12-04 | 2019-01-14 |
| 11 | Estudo do estado da arte | 2d | 2018-12-04 | 2018-12-06 |
| 12 | Caracterização dos atores | 8d | 2018-12-06 | 2018-12-18 |
| 13 | Diagrama dos casos de uso | 7d | 2018-12-18 | 2019-01-03 |
| 14 | Requisistos funcionais e não funcionais | 7d | 2019-01-03 | 2019-01-14 |
| 15 | Desenho do sistema | 72.75d | 2019-01-14 | 2019-04-30 |
| 16 | Modelação de interfaces | 20d | 2019-01-14 | 2019-02-11 |
| 17 | Storyboard da navegação | 10d | 2019-01-14 | 2019-01-28 |
| 18 | Interfaces dos casos de uso | 10d | 2019-01-28 | 2019-02-11 |
| 19 | Modelação da base de dados | 20d | 2019-02-11 | 2019-03-11 |
| 20 | Diagrama E/R | 10d | 2019-02-11 | 2019-02-25 |
| 21 | Modelo físico | 10d | 2019-02-25 | 2019-03-11 |
| 22 | Modelação UML | 20d | 2019-03-11 | 2019-04-08 |
| 23 | Diagrama de classes | 10d | 2019-03-11 | 2019-03-25 |
| 24 | Diagramas de sequência | 10d | 2019-03-25 | 2019-04-08 |
| 25 | Testes ao protótipo não funcional | 12.75d | 2019-04-08 | 2019-04-30 |
| 26 | Planeamento dos testes | 3d | 2019-04-08 | 2019-04-11 |
| 27 | Execução dos testes | 5d | 2019-04-11 | 2019-04-18 |
| 28 | Análise de resultados | 2d | 2019-04-18 | 2019-04-23 |
| 29 | Propostas de redesenho | 2d | 2019-04-23 | 2019-04-29 |
| 30 | Apresentação do protótipo não funcional ao cliente | 3h | 2019-04-29 | 2019-04-29 |
| 31 | Propostas de redesenho por parte do cliente | 3h | 2019-04-29 | 2019-04-30 |
| 32 | Desenvolvimento e testes | 87d | 2019-04-30 | 2019-09-04 |
| 33 | Execução da base de dados | 10d | 2019-04-30 | 2019-05-15 |
| 34 | Desenvolvimento das interfaces | 10d | 2019-04-30 | 2019-05-15 |
| 35 | Teste às interfaces | 4d | 2019-05-15 | 2019-05-21 |
| 36 | Desenvolvimento da inserção de anúncios | 15d | 2019-05-21 | 2019-06-12 |
| 37 | Testes à inserção de anúncios | 3d | 2019-06-12 | 2019-06-17 |
| 38 | Desenvolvimento do arrendamento por parte dos utilizadores | 15d | 2019-06-17 | 2019-07-09 |
| 39 | Testes aos arrendamento | 3d | 2019-07-09 | 2019-07-12 |
| 40 | Desenvolvimento dos métodos de pagamento | 15d | 2019-07-12 | 2019-08-02 |
| 41 | Testes aos métodos de pagamento | 3d | 2019-08-02 | 2019-08-07 |
| 42 | Desenvolvimento de funções adicionais | 10d | 2019-08-07 | 2019-08-22 |
| 43 | Teste às funções adicionais | 3d | 2019-08-22 | 2019-08-27 |
| 44 | Agregação e implementação do software | 6d | 2019-08-27 | 2019-09-04 |
| 45 | Controlo de qualidade | 14d | 2019-09-04 | 2019-09-24 |
| 46 | Alpha testing | 4d | 2019-09-04 | 2019-09-10 |
| 47 | Correção de erros | 2d | 2019-09-10 | 2019-09-12 |
| 48 | Beta testing | 4d | 2019-09-12 | 2019-09-18 |
| 49 | Correções finais | 2d | 2019-09-18 | 2019-09-20 |
| 50 | Otimização do código | 2d | 2019-09-20 | 2019-09-24 |
| 51 | Apresentação ao cliente | 3.38d | 2019-09-24 | 2019-09-27 |
| 52 | Testes com o cliente | 3h | 2019-09-24 | 2019-09-24 |
| 53 | Refinamento final | 3d | 2019-09-24 | 2019-09-27 |
| 54 | Análise global sobre o desenvolvimento da plataforma | 0.5d | 2019-09-27 | 2019-09-27 |
| 55 | Relatório da performance da equipa comparativamente com o cumprimentos das datas estipuladas para cada fase | 2h | 2019-09-27 | 2019-09-27 |
| 56 | Relatório sobre os custos totais da aplicação | 2h | 2019-09-27 | 2019-09-27 |
| 57 | Lançamento da aplicação | 0d | 2019-09-27 | 2019-09-27 |

## Version 2 (saved 2018-11-25)

Note of the change: Update aguadoce_estevao_msproject.mpp

Last finish stays 2019-09-27.

Changed:

| ID | Task | Total float | Predecessors |
| --- | --- | --- | --- |
| 5 | Identificação de ferramentas e recursos | none → 0d | none → 3 |
| 6 | Escolha e compra de hardware | none → 203.62d | none → 5 |
| 7 | Escolha e compra de software | none → 203.62d | none → 5 |
| 8 | Arrendamento de escritório | none → 0d | none → 5 |
| 9 | Análise de custos | none → 0d | none → 8 |
| 11 | Estudo do estado da arte | none → 0d | none → 9 |
| 12 | Caracterização dos atores | none → 0d | none → 11 |
| 13 | Diagrama dos casos de uso | none → 0d | none → 12 |
| 14 | Requisistos funcionais e não funcionais | none → 0d | none → 13 |
| 17 | Storyboard da navegação | none → 0d | none → 14 |
| 18 | Interfaces dos casos de uso | none → 0d | none → 17 |
| 20 | Diagrama E/R | none → 0d | none → 18 |
| 21 | Modelo físico | none → 0d | none → 20 |
| 23 | Diagrama de classes | none → 0d | none → 21 |
| 24 | Diagramas de sequência | none → 0d | none → 23 |
| 26 | Planeamento dos testes | none → 0d | none → 24 |
| 27 | Execução dos testes | none → 0d | none → 26 |
| 28 | Análise de resultados | none → 0d | none → 27 |
| 29 | Propostas de redesenho | none → 0d | none → 28 |
| 30 | Apresentação do protótipo não funcional ao cliente | none → 0d | none → 29 |
| 31 | Propostas de redesenho por parte do cliente | none → 0d | none → 30 |
| 33 | Execução da base de dados | none → 94.88d | none → 31 |
| 34 | Desenvolvimento das interfaces | none → 0d | none → 31 |
| 35 | Teste às interfaces | none → 0d | none → 34 |
| 36 | Desenvolvimento da inserção de anúncios | none → 0d | none → 35 |
| 37 | Testes à inserção de anúncios | none → 0d | none → 36 |
| 38 | Desenvolvimento do arrendamento por parte dos utilizadores | none → 0d | none → 37 |
| 39 | Testes aos arrendamento | none → 0d | none → 38 |
| 40 | Desenvolvimento dos métodos de pagamento | none → 0d | none → 39 |
| 41 | Testes aos métodos de pagamento | none → 0d | none → 40 |
| 42 | Desenvolvimento de funções adicionais | none → 0d | none → 41 |
| 43 | Teste às funções adicionais | none → 0d | none → 42 |
| 44 | Agregação e implementação do software | none → 0d | none → 43 |
| 46 | Alpha testing | none → 0d | none → 44 |
| 47 | Correção de erros | none → 0d | none → 46 |
| 48 | Beta testing | none → 0d | none → 47 |
| 49 | Correções finais | none → 0d | none → 48 |
| 50 | Otimização do código | none → 0d | none → 49 |
| 52 | Testes com o cliente | none → 0d | none → 50 |
| 53 | Refinamento final | none → 0d | none → 52 |
| 55 | Relatório da performance da equipa comparativamente com o cumprimentos das datas estipuladas para cada fase | none → 0d | none → 53 |
| 56 | Relatório sobre os custos totais da aplicação | none → 0d | none → 55 |
| 57 | Lançamento da aplicação | none → 0.5d | none → 53 |

## Version 3 (saved 2018-11-25)

Note of the change: Update aguadoce_estevao_msproject.mpp

Last finish stays 2019-09-27.

Changed:

| ID | Task | Other |
| --- | --- | --- |
| 3 | Reunião com cliente | resources none → Analista; Gestor de Projetos |
| 5 | Identificação de ferramentas e recursos | resources none → Analista; Designer/UX Developer; Engenheiro de Redes e Segurança Informática; Engenheiro de Software; Programador Sénior |
| 6 | Escolha e compra de hardware | resources none → Computadores/Periféricos; Servidor |
| 7 | Escolha e compra de software | resources none → Credenciais Software; Dominio |
| 8 | Arrendamento de escritório | resources none → Despesas Escritório; Escritório |
| 9 | Análise de custos | resources none → Analista; Gestor de Projetos |
| 11 | Estudo do estado da arte | resources none → Analista; Designer/UX Developer; Engenheiro de Software |
| 12 | Caracterização dos atores | resources none → Engenheiro de Software; Designer/UX Developer |
| 13 | Diagrama dos casos de uso | resources none → Engenheiro de Software |
| 14 | Requisistos funcionais e não funcionais | resources none → Engenheiro de Software; Analista |
| 17 | Storyboard da navegação | resources none → Designer/UX Developer; Analista |
| 18 | Interfaces dos casos de uso | resources none → Designer/UX Developer |
| 20 | Diagrama E/R | resources none → Programador Sénior |
| 21 | Modelo físico | resources none → Programador Sénior |
| 23 | Diagrama de classes | resources none → Engenheiro de Software; Programador Sénior |
| 24 | Diagramas de sequência | resources none → Engenheiro de Software |
| 26 | Planeamento dos testes | resources none → Designer/UX Developer; Analista |
| 27 | Execução dos testes | resources none → Analista; User Tester |
| 28 | Análise de resultados | resources none → Designer/UX Developer; Analista |
| 29 | Propostas de redesenho | resources none → User Tester; Designer/UX Developer |
| 30 | Apresentação do protótipo não funcional ao cliente | resources none → Gestor de Projetos; Designer/UX Developer; Analista |
| 31 | Propostas de redesenho por parte do cliente | resources none → Designer/UX Developer; Gestor de Projetos; Analista |
| 33 | Execução da base de dados | resources none → Programador Junior1; Programador Sénior |
| 34 | Desenvolvimento das interfaces | resources none → Designer/UX Developer |
| 35 | Teste às interfaces | resources none → Designer/UX Developer; Programador Junior2 |
| 36 | Desenvolvimento da inserção de anúncios | resources none → Programador Sénior; Engenheiro de Redes e Segurança Informática |
| 37 | Testes à inserção de anúncios | resources none → Programador Sénior; Engenheiro de Redes e Segurança Informática |
| 38 | Desenvolvimento do arrendamento por parte dos utilizadores | resources none → Programador Junior1; Programador Junior2; Engenheiro de Redes e Segurança Informática |
| 39 | Testes aos arrendamento | resources none → Programador Junior1; Programador Junior2; Engenheiro de Redes e Segurança Informática |
| 40 | Desenvolvimento dos métodos de pagamento | resources none → Engenheiro de Redes e Segurança Informática; Programador Sénior |
| 41 | Testes aos métodos de pagamento | resources none → Engenheiro de Redes e Segurança Informática; Programador Sénior |
| 42 | Desenvolvimento de funções adicionais | resources none → Engenheiro de Redes e Segurança Informática; Programador Junior1; Programador Junior2 |
| 43 | Teste às funções adicionais | resources none → Engenheiro de Redes e Segurança Informática; Programador Junior1; Programador Junior2 |
| 44 | Agregação e implementação do software | resources none → Engenheiro de Redes e Segurança Informática; Engenheiro de Software; Programador Sénior |
| 46 | Alpha testing | resources none → Analista; Designer/UX Developer; Programador Sénior; Engenheiro de Redes e Segurança Informática |
| 47 | Correção de erros | resources none → Programador Junior1; Programador Junior2; Engenheiro de Redes e Segurança Informática |
| 48 | Beta testing | resources none → Analista; Designer/UX Developer; Programador Sénior; User Tester; Engenheiro de Redes e Segurança Informática |
| 49 | Correções finais | resources none → Programador Junior1; Programador Junior2; Engenheiro de Redes e Segurança Informática |
| 50 | Otimização do código | resources none → Programador Sénior; Engenheiro de Redes e Segurança Informática |
| 52 | Testes com o cliente | resources none → Analista; Gestor de Projetos |
| 53 | Refinamento final | resources none → Designer/UX Developer; Engenheiro de Redes e Segurança Informática; Programador Sénior |
| 55 | Relatório da performance da equipa comparativamente com o cumprimentos das datas estipuladas para cada fase | resources none → Gestor de Projetos |
| 56 | Relatório sobre os custos totais da aplicação | resources none → Analista |
| 57 | Lançamento da aplicação | resources none → Gestor de Projetos |

## Version 4 (saved 2018-11-25)

Note of the change: Update aguadoce_estevao_msproject.mpp

Last finish stays 2019-09-27.

Added:

| ID | Task | Duration | Start | Finish | Constraint | Resources |
| --- | --- | --- | --- | --- | --- | --- |
| 10 | **Pagamentos contas** | 163.06d | 2018-12-26 | 2019-08-26 |  |  |
| 11 | Pagamentos contas 2 | 30min | 2018-12-26 | 2018-12-26 | start no earlier than 2018-12-26 | Despesas Escritório; Dominio; Escritório |
| 12 | Pagamentos contas 3 | 30min | 2019-01-26 | 2019-01-26 | start no earlier than 2019-01-26 | Despesas Escritório; Dominio; Escritório |
| 13 | Pagamentos contas 4 | 30min | 2019-02-26 | 2019-02-26 | start no earlier than 2019-02-26 | Despesas Escritório; Dominio; Escritório |
| 14 | Pagamentos contas 5 | 30min | 2019-03-26 | 2019-03-26 | start no earlier than 2019-03-26 | Despesas Escritório; Dominio; Escritório |
| 15 | Pagamentos contas 6 | 30min | 2019-04-26 | 2019-04-26 | start no earlier than 2019-04-26 | Despesas Escritório; Dominio; Escritório |
| 16 | Pagamentos contas 7 | 30min | 2019-05-26 | 2019-05-26 | start no earlier than 2019-05-26 | Despesas Escritório; Dominio; Escritório |
| 17 | Pagamentos contas 8 | 30min | 2019-06-26 | 2019-06-26 | start no earlier than 2019-06-26 | Despesas Escritório; Dominio; Escritório |
| 18 | Pagamentos contas 9 | 30min | 2019-07-26 | 2019-07-26 | start no earlier than 2019-07-26 | Despesas Escritório; Dominio; Escritório |
| 19 | Pagamentos contas 10 | 30min | 2019-08-26 | 2019-08-26 | start no earlier than 2019-08-26 | Despesas Escritório; Dominio; Escritório |

## Version 5 (saved 2018-11-26)

Note of the change: Update aguadoce_estevao_msproject.mpp

Last finish 2019-09-27 → 2019-09-26 (-1d).

Changed:

| ID | Task | Start | Finish | Duration |
| --- | --- | --- | --- | --- |
| 1 | **Desenvolvimento da aplicação Airbnb** |  | 2019-09-27 → 2019-09-26 (-1d) | 208d → 207d |
| 20 | **Análise do sistema** |  | 2019-01-14 → 2019-01-11 (-3d) | 24d → 23d |
| 23 | Diagrama dos casos de uso |  | 2019-01-03 → 2018-12-31 (-3d) |  |
| 24 | Requisistos funcionais e não funcionais | 2019-01-03 → 2018-12-31 (-3d) | 2019-01-14 → 2019-01-11 (-3d) |  |
| 25 | **Desenho do sistema** | 2019-01-14 → 2019-01-11 (-3d) | 2019-04-30 → 2019-04-29 (-1d) |  |
| 26 | **Modelação de interfaces** | 2019-01-14 → 2019-01-11 (-3d) | 2019-02-11 → 2019-02-08 (-3d) |  |
| 27 | Storyboard da navegação | 2019-01-14 → 2019-01-11 (-3d) | 2019-01-28 → 2019-01-25 (-3d) |  |
| 28 | Interfaces dos casos de uso | 2019-01-28 → 2019-01-25 (-3d) | 2019-02-11 → 2019-02-08 (-3d) |  |
| 29 | **Modelação da base de dados** | 2019-02-11 → 2019-02-08 (-3d) | 2019-03-11 → 2019-03-08 (-3d) |  |
| 30 | Diagrama E/R | 2019-02-11 → 2019-02-08 (-3d) | 2019-02-25 → 2019-02-22 (-3d) |  |
| 31 | Modelo físico | 2019-02-25 → 2019-02-22 (-3d) | 2019-03-11 → 2019-03-08 (-3d) |  |
| 32 | **Modelação UML** | 2019-03-11 → 2019-03-08 (-3d) | 2019-04-08 → 2019-04-05 (-3d) |  |
| 33 | Diagrama de classes | 2019-03-11 → 2019-03-08 (-3d) | 2019-03-25 → 2019-03-22 (-3d) |  |
| 34 | Diagramas de sequência | 2019-03-25 → 2019-03-22 (-3d) | 2019-04-08 → 2019-04-05 (-3d) |  |
| 35 | **Testes ao protótipo não funcional** | 2019-04-08 → 2019-04-05 (-3d) | 2019-04-30 → 2019-04-29 (-1d) |  |
| 36 | Planeamento dos testes | 2019-04-08 → 2019-04-05 (-3d) | 2019-04-11 → 2019-04-10 (-1d) |  |
| 37 | Execução dos testes | 2019-04-11 → 2019-04-10 (-1d) | 2019-04-18 → 2019-04-17 (-1d) |  |
| 38 | Análise de resultados | 2019-04-18 → 2019-04-17 (-1d) | 2019-04-23 → 2019-04-22 (-1d) |  |
| 39 | Propostas de redesenho | 2019-04-23 → 2019-04-22 (-1d) | 2019-04-29 → 2019-04-24 (-5d) |  |
| 40 | Apresentação do protótipo não funcional ao cliente | 2019-04-29 → 2019-04-24 (-5d) | 2019-04-29 → 2019-04-24 (-5d) |  |
| 41 | Propostas de redesenho por parte do cliente | 2019-04-29 → 2019-04-24 (-5d) | 2019-04-30 → 2019-04-29 (-1d) |  |
| 42 | **Desenvolvimento e testes** | 2019-04-30 → 2019-04-29 (-1d) | 2019-09-04 → 2019-09-03 (-1d) |  |
| 43 | Execução da base de dados | 2019-04-30 → 2019-04-29 (-1d) | 2019-05-15 → 2019-05-14 (-1d) |  |
| 44 | Desenvolvimento das interfaces | 2019-04-30 → 2019-04-29 (-1d) | 2019-05-15 → 2019-05-14 (-1d) |  |
| 45 | Teste às interfaces | 2019-05-15 → 2019-05-14 (-1d) | 2019-05-21 → 2019-05-20 (-1d) |  |
| 46 | Desenvolvimento da inserção de anúncios | 2019-05-21 → 2019-05-20 (-1d) | 2019-06-12 → 2019-06-11 (-1d) |  |
| 47 | Testes à inserção de anúncios | 2019-06-12 → 2019-06-11 (-1d) | 2019-06-17 → 2019-06-14 (-3d) |  |
| 48 | Desenvolvimento do arrendamento por parte dos utilizadores | 2019-06-17 → 2019-06-14 (-3d) | 2019-07-09 → 2019-07-08 (-1d) |  |
| 49 | Testes aos arrendamento | 2019-07-09 → 2019-07-08 (-1d) | 2019-07-12 → 2019-07-11 (-1d) |  |
| 50 | Desenvolvimento dos métodos de pagamento | 2019-07-12 → 2019-07-11 (-1d) | 2019-08-02 → 2019-08-01 (-1d) |  |
| 51 | Testes aos métodos de pagamento | 2019-08-02 → 2019-08-01 (-1d) | 2019-08-07 → 2019-08-06 (-1d) |  |
| 52 | Desenvolvimento de funções adicionais | 2019-08-07 → 2019-08-06 (-1d) | 2019-08-22 → 2019-08-21 (-1d) |  |
| 53 | Teste às funções adicionais | 2019-08-22 → 2019-08-21 (-1d) | 2019-08-27 → 2019-08-26 (-1d) |  |
| 54 | Agregação e implementação do software | 2019-08-27 → 2019-08-26 (-1d) | 2019-09-04 → 2019-09-03 (-1d) |  |
| 55 | **Controlo de qualidade** | 2019-09-04 → 2019-09-03 (-1d) | 2019-09-24 → 2019-09-23 (-1d) |  |
| 56 | Alpha testing | 2019-09-04 → 2019-09-03 (-1d) | 2019-09-10 → 2019-09-09 (-1d) |  |
| 57 | Correção de erros | 2019-09-10 → 2019-09-09 (-1d) | 2019-09-12 → 2019-09-11 (-1d) |  |
| 58 | Beta testing | 2019-09-12 → 2019-09-11 (-1d) | 2019-09-18 → 2019-09-17 (-1d) |  |
| 59 | Correções finais | 2019-09-18 → 2019-09-17 (-1d) | 2019-09-20 → 2019-09-19 (-1d) |  |
| 60 | Otimização do código | 2019-09-20 → 2019-09-19 (-1d) | 2019-09-24 → 2019-09-23 (-1d) |  |
| 61 | **Apresentação ao cliente** | 2019-09-24 → 2019-09-23 (-1d) | 2019-09-27 → 2019-09-26 (-1d) |  |
| 62 | Testes com o cliente | 2019-09-24 → 2019-09-23 (-1d) | 2019-09-24 → 2019-09-23 (-1d) |  |
| 63 | Refinamento final | 2019-09-24 → 2019-09-23 (-1d) | 2019-09-27 → 2019-09-26 (-1d) |  |
| 64 | **Análise global sobre o desenvolvimento da plataforma** | 2019-09-27 → 2019-09-26 (-1d) | 2019-09-27 → 2019-09-26 (-1d) |  |
| 65 | Relatório da performance da equipa comparativamente com o cumprimentos das datas estipuladas para cada fase | 2019-09-27 → 2019-09-26 (-1d) | 2019-09-27 → 2019-09-26 (-1d) |  |
| 66 | Relatório sobre os custos totais da aplicação | 2019-09-27 → 2019-09-26 (-1d) | 2019-09-27 → 2019-09-26 (-1d) |  |
| 67 | Lançamento da aplicação | 2019-09-27 → 2019-09-26 (-1d) | 2019-09-27 → 2019-09-26 (-1d) |  |
